# Projet Exemple

Schedule from MS Project XML, 2025-01-06 to 2025-06-13.
MSP Demo

## Calendars

- Standard: Mon-Fri 08:00-12:00, 13:00-17:00; Sat-Sun off.

## Resources

| Resource | Rate |
| --- | --- |
| Chef de projet | 60 |
| Developpeur senior | 50 |
| Developpeur junior | 35 |
| Testeur QA | 40 |
| Designer UX | 45 |

## Schedule

| ID | WBS | Task | Type | Start | Finish | Predecessors | Resources |
| --- | --- | --- | --- | --- | --- | --- | --- |
| 1 | 1 | **Phase 1 - Cadrage** |  | 2025-01-06 | 2025-01-24 |  |  |
| 2 | 1.1 | Reunion de lancement |  | 2025-01-06 | 2025-01-06 | 1 | Chef de projet |
| 3 | 1.2 | Analyse des besoins metier |  | 2025-01-07 | 2025-01-10 | 2 | Chef de projet |
| 4 | 1.3 | Redaction du cahier des charges |  | 2025-01-13 | 2025-01-17 | 3 | Chef de projet [50%] |
| 5 | 1.4 | Validation du cadrage | milestone | 2025-01-20 | 2025-01-20 | 4 |  |
| 6 | 1.5 | Etude de faisabilite technique |  | 2025-01-13 | 2025-01-17 | 3 |  |
| 7 | 1.6 | Estimation des couts |  | 2025-01-20 | 2025-01-24 | 4 |  |
| 8 | 2 | **Phase 2 - Conception** |  | 2025-01-27 | 2025-02-21 | 5 |  |
| 9 | 2.1 | Architecture technique |  | 2025-01-27 | 2025-01-31 | 8 | Developpeur senior |
| 10 | 2.2 | Modele de donnees |  | 2025-02-03 | 2025-02-07 | 9 | Developpeur senior |
| 11 | 2.3 | Maquettes UX/UI |  | 2025-02-03 | 2025-02-14 | 9 | Designer UX |
| 12 | 2.4 | Prototypage interactif |  | 2025-02-10 | 2025-02-21 | 10 |  |
| 13 | 2.5 | Revue de conception | milestone | 2025-02-24 | 2025-02-24 | 12 |  |
| 14 | 3 | **Phase 3 - Developpement** |  | 2025-02-25 | 2025-04-25 | 13 |  |
| 15 | 3.1 | Mise en place de l'environnement |  | 2025-02-25 | 2025-02-28 | 14 |  |
| 16 | 3.2 | Developpement module authentification |  | 2025-03-03 | 2025-03-14 | 15 | Developpeur senior |
| 17 | 3.3 | Developpement module utilisateurs |  | 2025-03-10 | 2025-03-28 | 15 | Developpeur junior |
| 18 | 3.4 | Developpement module tableau de bord |  | 2025-03-17 | 2025-04-11 | 16 | Developpeur senior |
| 19 | 3.5 | Developpement module reporting |  | 2025-03-31 | 2025-04-25 | 17 | Developpeur junior |
| 20 | 3.6 | Integration continue (CI/CD) |  | 2025-03-03 | 2025-03-07 | 15 |  |
| 21 | 3.7 | Revue de code sprint 1 |  | 2025-03-17 | 2025-03-17 | 16 |  |
| 22 | 3.8 | Revue de code sprint 2 |  | 2025-03-31 | 2025-03-31 | 17 |  |
| 23 | 3.9 | Revue de code sprint 3 |  | 2025-04-14 | 2025-04-14 | 18 |  |
| 24 | 3.10 | Revue de code sprint 4 |  | 2025-04-28 | 2025-04-28 | 19 |  |

| ID | WBS | Task | Type | Start | Finish | Predecessors | Resources |
| --- | --- | --- | --- | --- | --- | --- | --- |
| 25 | 4 | **Phase 4 - Tests** |  | 2025-04-28 | 2025-05-16 | 24 |  |
| 26 | 4.1 | Redaction des plans de test |  | 2025-04-28 | 2025-05-02 | 19 |  |
| 27 | 4.2 | Tests unitaires |  | 2025-04-28 | 2025-05-09 | 24 | Testeur QA |
| 28 | 4.3 | Tests d'integration |  | 2025-05-05 | 2025-05-09 | 26 | Testeur QA |
| 29 | 4.4 | Tests fonctionnels |  | 2025-05-12 | 2025-05-14 | 28 | Testeur QA |
| 30 | 4.5 | Tests de performance |  | 2025-05-12 | 2025-05-16 | 28 |  |
| 31 | 4.6 | Recette utilisateur (UAT) |  | 2025-05-15 | 2025-05-16 | 29 |  |
| 32 | 4.7 | Correction des anomalies |  | 2025-05-19 | 2025-05-23 | 31 | Developpeur junior |
| 33 | 4.8 | Validation des tests | milestone | 2025-05-26 | 2025-05-26 | 32 |  |
| 34 | 5 | **Phase 5 - Deploiement** |  | 2025-05-27 | 2025-06-06 | 33 |  |
| 35 | 5.1 | Preparation de l'environnement de production |  | 2025-05-27 | 2025-05-30 | 34 | Developpeur senior |
| 36 | 5.2 | Migration des donnees |  | 2025-06-02 | 2025-06-03 | 35 |  |
| 37 | 5.3 | Deploiement en production | milestone | 2025-06-04 | 2025-06-04 | 36 |  |
| 38 | 5.4 | Smoke tests post-deploiement |  | 2025-06-05 | 2025-06-05 | 37 |  |
| 39 | 5.5 | Formation des utilisateurs |  | 2025-06-02 | 2025-06-06 | 35 |  |
| 40 | 6 | **Phase 6 - Cloture** |  | 2025-06-09 | 2025-06-13 | 37 |  |
| 41 | 6.1 | Redaction de la documentation |  | 2025-06-09 | 2025-06-11 | 40 | Chef de projet [50%] |
| 42 | 6.2 | Bilan de projet |  | 2025-06-12 | 2025-06-12 | 38 |  |
| 43 | 6.3 | Retrospective equipe |  | 2025-06-13 | 2025-06-13 | 42 |  |
| 44 | 6.4 | Livraison finale | milestone | 2025-06-13 | 2025-06-13 | 41 |  |
| 45 | 7.1 | Suivi hebdomadaire |  | 2025-01-10 | 2025-06-13 | 2 | Chef de projet [20%] |
| 46 | 7.2 | Gestion des risques |  | 2025-01-06 | 2025-06-13 | 1 | Chef de projet [20%] |
| 47 | 7.3 | Communication projet |  | 2025-01-06 | 2025-06-13 | 1 |  |
| 48 | 7.4 | Gestion du backlog |  | 2025-01-27 | 2025-06-13 | 8 |  |
| 49 | 7.5 | Veille technologique |  | 2025-01-27 | 2025-06-13 | 8 |  |
| 50 | 7.6 | Archivage du projet |  | 2025-06-13 | 2025-06-13 | 44 |  |
